# CronogramaCiclo2-2003

How a schedule from MS Project changed from version to version. A marks actual dates.

## Version 1 (saved 2011-10-06)

Note of the change: Actualización, horas, asginaciones

| ID | WBS | Task | Duration | Start | Finish | Predecessors | Total float |
| --- | --- | --- | --- | --- | --- | --- | --- |
| 1 | 1 | **Ciclo 2** | 19.12d? | 2011-10-05 09:00 | 2011-11-01 10:00 |  | 0d |
| 2 |  | Pantalla de aprobación para del fabricante | 1d? | 2011-10-05 09:00 | 2011-10-05 19:00 |  | 10.88d |
| 3 |  | Proceso bpel para enviar correo | 0.5d? | 2011-10-17 10:00 | 2011-10-17 16:00 |  | 10.5d |
| 4 | 1.3 | **Parte 1** | 10.62d? | 2011-10-05 09:00 | 2011-10-19 16:00 |  | 0d |
| 5 |  | Modificar tabla purchase Order en transact para que quede igual a PO | 0.25d? | 2011-10-05 09:00 | 2011-10-05 11:00 |  | 0d |
| 6 |  | En la app transact Manager, realizar una operación que inserte una orden de compra | 0.5d? | 2011-10-05 11:00 | 2011-10-05 17:00 | 5 | 0d |
| 7 |  | En la app transact Manager, realizar una operación para agregar una subasta | 0.5d? | 2011-10-05 17:00 | 2011-10-06 11:00 | 6 | 0d |
| 8 |  | OSB, realizar business service que inserte una orden de compra | 0.25d? | 2011-10-05 11:00 | 2011-10-05 13:00 | 5 | 10.88d |
| 9 |  | OSB, realizar proxy service una operación que inserte una orden de compra | 0.62d? | 2011-10-05 15:00 | 2011-10-06 10:00 | 8 | 10.88d |
| 10 |  | OSB, realizar business service para agregar una subasta | 0.25d? | 2011-10-06 11:00 | 2011-10-06 13:00 | 7 | 9.12d |
| 11 |  | OSB, realizar proxy service una operación para agregar una subasta | 0.62d? | 2011-10-06 15:00 | 2011-10-07 10:00 | 10 | 9.12d |
| 12 |  | Crear proceso Bpel Parte 1 (Crear subasta) | 0.5d? | 2011-10-07 10:00 | 2011-10-07 16:00 | 11 | 10.25d |
| 13 |  | Vista Ingreso, ordenes de compra | 1d? | 2011-10-07 16:00 | 2011-10-10 16:00 | 12 | 15.5d |
| 14 |  | Estimación | 0.75d? | 2011-10-05 09:00 | 2011-10-07 13:00 |  | 16.62d |
| 15 |  | Portafolio de servicios detallado (Netbeans) | 1d? | 2011-10-06 11:00 | 2011-10-07 11:00 | 7 | 8.5d |
| 16 |  | Riesgos | 0.75d? | 2011-10-07 11:00 | 2011-10-19 16:00 | 15 | 8.5d |
| 17 | 1.4 | **Parte 2** | 2.12d? | 2011-10-06 09:00 | 2011-10-10 10:00 |  | 0.25d |
| 18 |  | Modificar en el CRM, consultar clientes por productos | 1d? | 2011-10-06 09:00 | 2011-10-06 19:00 | 2 | 10.88d |
| 19 |  | En la app transact Manager, realizar una operación que inserte un registro en fubasta fabricante | 0.5d? | 2011-10-06 11:00 | 2011-10-06 17:00 | 7 | 0d |
| 20 |  | OSB, realizar business service que inserte un registro en fubasta fabricante | 0.25d? | 2011-10-06 10:00 | 2011-10-06 12:00 | 9 | 10.88d |
| 21 |  | OSB, realizar proxy service una operación que inserte un registro en fubasta fabricante | 0.62d? | 2011-10-06 12:00 | 2011-10-06 19:00 | 20 | 10.88d |
| 22 |  | Crear proceso Bpel Parte 2 (Asignar fabricantes subasta) | 0.5d? | 2011-10-07 16:00 | 2011-10-10 10:00 | 12, 21, 18 | 10.25d |
| 23 |  | Portafolio de servicios detallado (OSB) | 0.75d? | 2011-10-07 10:00 | 2011-10-07 18:00 | 11 | 9.12d |
| 24 | 1.5 | **Parte 3** | 12.88d? | 2011-10-06 17:00 | 2011-10-25 16:00 |  | 0d |
| 25 |  | En la app transact Manager, realizar una operación que consulte las subastas activas por id de fabricante | 0.5d? | 2011-10-06 17:00 | 2011-10-07 11:00 | 19 | 0d |
| 26 |  | En la app transact Manager, realizar una operación que permita al fabricante que registre su oferta | 0.5d? | 2011-10-07 11:00 | 2011-10-07 17:00 | 25 | 0d |
| 27 |  | OSB, realizar business service que consulte las subastas activas por id de fabricante | 0.25d? | 2011-10-17 10:00 | 2011-10-17 12:00 | 25 | 10.12d |
| 28 |  | OSB, realizar proxy service una operación que consulte las subastas por id de fabricante | 0.62d? | 2011-10-17 12:00 | 2011-10-17 19:00 | 27 | 10.12d |
| 29 |  | OSB, realizar business service que permita al fabricante que registre su oferta | 0.25d? | 2011-10-07 17:00 | 2011-10-07 19:00 | 26 | 8.88d |
| 30 |  | OSB, realizar proxy service una operación que permita al fabricante que registre su oferta | 0.62d? | 2011-10-10 09:00 | 2011-10-10 16:00 | 29 | 8.88d |
| 31 |  | En la app transact Manager, realizar una operación que consulte los fabricantes que estan participando en una subasta | 0.5d? | 2011-10-21 09:00 | 2011-10-21 13:00 | 26 | 0d |
| 32 |  | OSB, realizar business service queconsulte los fabricantes que esten en una subasta | 0.25d? | 2011-10-21 15:00 | 2011-10-21 17:00 | 31, 30 | 0d |
| 33 |  | OSB, realizar proxy service que consulte los fabricantes que esten en una subasta | 0.62d? | 2011-10-21 17:00 | 2011-10-24 12:00 | 32 | 0d |
| 34 |  | Crear proceso Bpel Parte 3 (Ofertar) | 0.5d? | 2011-10-24 12:00 | 2011-10-24 18:00 | 22, 33 | 0d |
| 35 |  | Vista para ofertar | 0.75d? | 2011-10-24 18:00 | 2011-10-25 16:00 | 34, 18 | 3.75d |
| 36 | 1.6 | **Parte 4** | 12.12d? | 2011-10-07 17:00 | 2011-10-25 18:00 |  | 4.25d |
| 37 |  | En la app transact Manager, realizar una operación que actualice el estado de la tabla subasta | 0.5d? | 2011-10-07 17:00 | 2011-10-10 11:00 | 26 | 7.75d |
| 38 |  | Crear tabla overhead, (Tiempo, costo, pais origen, pais destino) | 0.5d? | 2011-10-10 11:00 | 2011-10-10 17:00 | 37 | 7.75d |
| 39 |  | En la app transact Manager, realizar una operación que calcule el ganador de la subasta inversa | 0.5d? | 2011-10-10 17:00 | 2011-10-11 11:00 | 38 | 7.75d |
| 40 |  | OSB, realizar business service que actualice el estado de la tabla subasta | 0.25d? | 2011-10-10 11:00 | 2011-10-10 13:00 | 37, 21 | 15d |
| 41 |  | OSB, realizar proxy service una operación que actualice el estado de la tabla subasta | 0.62d? | 2011-10-10 15:00 | 2011-10-11 10:00 | 40 | 15d |
| 42 |  | OSB, realizar business service que calcule el ganador de la subasta inversa | 0.25d? | 2011-10-11 11:00 | 2011-10-11 13:00 | 23, 39 | 7.75d |
| 43 |  | OSB, realizar proxy service una operación que calcule el ganador de la subasta inversa | 0.62d? | 2011-10-11 15:00 | 2011-10-13 10:00 | 42 | 7.75d |
| 44 |  | Crear proceso Bpel Parte4 (Cerrar subasta, Dar Ganador) | 0.5d? | 2011-10-24 18:00 | 2011-10-25 12:00 | 43, 34 | 0d |
| 45 |  | Crear Bpel enviar correos | 0.5d? | 2011-10-25 12:00 | 2011-10-25 18:00 | 44 | 0d |
| 46 |  | Listar portafolio de servicios expuestos (Bpel) | 0.75d? | 2011-10-25 18:00 | 2011-10-26 16:00 | 45 | 0d |
| 47 |  | Diagrama entidad relacion transact manager | 0.75d? | 2011-10-11 11:00 | 2011-10-11 19:00 | 39 | 14.12d |
| 48 |  | Proceso en BPMN | 0.75d? | 2011-10-27 16:00 | 2011-10-28 12:00 | 46 | 1d |
| 49 |  | Catalogo Proceso | 0.75d? | 2011-10-28 12:00 | 2011-10-31 10:00 | 48 | 1d |
| 50 |  | Crear transformaciones al canonico | 1d? | 2011-10-26 16:00 | 2011-10-27 16:00 | 46 | 0d |
| 51 |  | Documentación de canonico | 2d? | 2011-10-27 16:00 | 2011-11-01 10:00 | 50 | 0d |
| 52 |  | Diagrama de navegavión | 0.75d? | 2011-10-25 16:00 | 2011-10-26 12:00 | 35 | 3.75d |
| 53 |  | Estrategia | 0.5d? | 2011-10-18 09:00 | 2011-10-18 13:00 |  | 9.62d |
| 54 |  | Alcance | 0.5d? | 2011-10-18 09:00 | 2011-10-18 13:00 |  | 9.62d |
| 55 |  | Plan de calidad | 0.5d? | 2011-10-07 09:00 | 2011-10-07 13:00 |  | 16.62d |
| 56 |  | Seguimiento | 1d? | 2011-10-05 09:00 | 2011-10-05 19:00 |  | 18.12d |
| 57 |  | Análisis | 0.75d? | 2011-10-05 09:00 | 2011-10-05 17:00 |  | 18.38d |
| 58 |  | Postmortem | 3.12d? | 2011-10-07 18:00 | 2011-10-14 19:00 |  | 11.12d |
| 59 |  | Plan de mejoramiento detallado | 1d? | 2011-10-21 15:00 | 2011-10-24 13:00 |  | 5.62d |
| 60 |  | Plan y Ejecución de pruebas | 3.12d? | 2011-10-10 18:00 | 2011-10-17 19:00 |  | 10.12d |
| 61 |  | Reporte de incidencias de producto | 3.25d? | 2011-10-11 18:00 | 2011-10-19 10:00 |  | 9d |
| 62 |  | Implementar aplicación de incidencias | 2.88d? | 2011-10-13 10:00 | 2011-10-19 19:00 |  | 8.12d |
| 63 |  | Tareas no planeadas | 2.88d? | 2011-10-14 10:00 | 2011-10-20 19:00 |  | 7.12d |
| 64 |  | Reuniones | 7.25d? | 2011-10-05 09:00 | 2011-10-19 18:00 |  | 8.25d |

## Version 2 (saved 2011-10-08)

Last finish 2011-11-01 → 2011-10-31 (-1d).

Added:

| ID | Task | Duration | Start | Finish | Resources |
| --- | --- | --- | --- | --- | --- |
| 65 | Miscelaneos | 1d? | 2011-10-05 09:00 | 2011-10-05 19:00 | Willian; Sandra; Erik; Mauricio; David; Carlos |

Changed:

| ID | Task | Start | Finish | Duration | Total float | Other |
| --- | --- | --- | --- | --- | --- | --- |
| 1 | **Ciclo 2** |  | 2011-11-01 10:00 → 2011-10-31 16:22 (-1d) | 19.12d? → 18.67d? |  |  |
| 50 | Crear transformaciones al canonico |  | 2011-10-27 16:00 → 2011-10-27 12:40 | 1d? → 0.83d? |  | resources Willian; Sandra; Erik; Mauricio; David → Willian; Sandra; Erik; Mauricio; David; Carlos |
| 51 | Documentación de canonico | 2011-10-27 16:00 → 2011-10-27 12:40 | 2011-11-01 10:00 → 2011-10-31 16:22 (-1d) | 2d? → 1.71d? |  | resources Willian; Sandra; Erik; Mauricio; David → Willian; Sandra; Erik; Mauricio; David; Carlos |
| 58 | Postmortem |  | 2011-10-14 19:00 → 2011-10-14 15:55 | 3.12d? → 2.54d? | 11.12d → 11.06d | resources Willian; Sandra; Erik; Mauricio; David → Willian; Sandra; Erik; Mauricio; David; Carlos |
| 60 | Plan y Ejecución de pruebas |  | 2011-10-17 19:00 → 2011-10-17 15:55 | 3.12d? → 2.54d? | 10.12d → 10.06d | resources Willian; Sandra; Erik; Mauricio; David → Willian; Sandra; Erik; Mauricio; David; Carlos |
| 61 | Reporte de incidencias de producto |  | 2011-10-19 10:00 → 2011-10-18 16:50 (-1d) | 3.25d? → 2.7d? | 9d → 8.94d | resources Willian; Sandra; Erik; Mauricio; David → Willian; Sandra; Erik; Mauricio; David; Carlos |
| 62 | Implementar aplicación de incidencias |  | 2011-10-19 19:00 → 2011-10-19 16:04 | 2.88d? → 2.46d? | 8.12d → 8.04d | resources Willian; Sandra; Erik; Mauricio; David → Willian; Sandra; Erik; Mauricio; David; Carlos |
| 63 | Tareas no planeadas |  | 2011-10-20 19:00 → 2011-10-20 16:04 | 2.88d? → 2.46d? | 7.12d → 7.04d | resources Willian; Sandra; Erik; Mauricio; David → Willian; Sandra; Erik; Mauricio; David; Carlos |
| 64 | Reuniones |  | 2011-10-19 18:00 → 2011-10-18 16:16 (-1d) | 7.25d? → 5.24d? | 8.25d → 9.01d | resources Willian; Sandra; Erik; Mauricio; David → Willian; Sandra; Erik; Mauricio; David; Carlos |

## Version 3 (saved 2011-10-08)

Last finish stays 2011-10-31.

Removed: 62 Implementar aplicación de incidencias; 65 Miscelaneos

Changed:

| ID | Task | Start | Finish | Duration | Total float | Predecessors | Other |
| --- | --- | --- | --- | --- | --- | --- | --- |
| 12 | Crear proceso Bpel Parte 1 (Crear subasta) | 2011-10-07 10:00 → 2011-10-17 16:00 (+10d) | 2011-10-07 16:00 → 2011-10-18 10:00 (+11d) |  | 10.25d → 3.75d | 11 → 3 |  |
| 13 | Vista Ingreso, ordenes de compra | 2011-10-07 16:00 → 2011-10-18 10:00 (+11d) | 2011-10-10 16:00 → 2011-10-19 10:00 (+9d) |  | 15.05d → 8.55d |  |  |
| 15 | Portafolio de servicios detallado (Netbeans) |  |  |  |  |  | resources Mauricio → Erik |
| 17 | **Parte 2** |  | 2011-10-10 10:00 → 2011-10-18 16:00 (+8d) | 2.12d? → 8.62d? |  |  |  |
| 22 | Crear proceso Bpel Parte 2 (Asignar fabricantes subasta) | 2011-10-07 16:00 → 2011-10-18 10:00 (+11d) | 2011-10-10 10:00 → 2011-10-18 16:00 (+8d) |  | 10.25d → 3.75d |  |  |
| 61 | Solución de incidencias de producto |  |  |  |  |  | was named Reporte de incidencias de producto |
