# Proyect1

How a schedule from MS Project changed from version to version. A marks actual dates.

## Version 1 (saved 2011-11-06)

Note of the change: Agregado el cronograma

| ID | WBS | Task | Duration | Start | Finish | Predecessors | Total float |
| --- | --- | --- | --- | --- | --- | --- | --- |
| 1 | 1 | **Merket place proyecto 3 ciclo 3** | 8.31d? | 2011-10-31 09:00 | 2011-11-10 11:30 |  | 0d |
| 2 | 1.1 | **Estabilización** | 0.5d? | 2011-10-31 09:00 | 2011-10-31 13:00 |  | 0d |
| 3 |  | Actualizar repositorio (BPEL - CRM) | 0.5d? | 2011-10-31 09:00 | 2011-10-31 13:00 |  | 0d |
| 4 |  | Actualizar repositorio LEG | 0.5d? | 2011-10-31 09:00 | 2011-10-31 13:00 |  | 0d |
| 5 |  | [SEG] Reunión de inicio ciclo 3 | 0.5d? | 2011-10-31 09:00 | 2011-10-31 13:00 |  | 7.81d |
| 6 | 1.3 | **Parte 1** | 2.56d? | 2011-10-31 15:00 | 2011-11-03 09:30 | 2 | 0d |
| 7 |  | [DOC] Estrategía | 0.5d? | 2011-10-31 15:00 | 2011-10-31 19:00 |  | 2.06d |
| 8 |  | [DOC] Alcance | 0.5d? | 2011-10-31 15:00 | 2011-10-31 19:00 |  | 2.06d |
| 9 |  | [DOC] Estimación | 0.5d? | 2011-10-31 15:00 | 2011-10-31 19:00 |  | 2.06d |
| 10 |  | [DOC] Plan de proyecto | 0.38d? | 2011-10-31 15:00 | 2011-10-31 18:00 |  | 2.19d |
| 11 |  | [DOC] Plan de calidad | 0.5d? | 2011-10-31 15:00 | 2011-10-31 19:00 |  | 2.06d |
| 12 |  | [DOC] Plan de mejoramiento detallado | 0.5d? | 2011-10-31 15:00 | 2011-10-31 19:00 |  | 2.06d |
| 13 |  | [DOC] Plan de riesgos | 0.5d? | 2011-10-31 15:00 | 2011-10-31 19:00 |  | 2.06d |
| 14 |  | [CRM] Consultar Cliente | 0.38d? | 2011-10-31 15:00 | 2011-10-31 18:00 |  | 0d |
| 15 |  | [OSB] Consultar Cliente | 0.31d? | 2011-10-31 18:00 | 2011-11-01 10:30 | 14 | 1.5d |
| 16 |  | [BPEL] Consultar Cliente | 0.38d? | 2011-11-01 10:30 | 2011-11-01 15:30 | 15 | 1.5d |
| 17 |  | [CRM] Crear cliente | 0.38d? | 2011-10-31 18:00 | 2011-11-01 11:00 | 14 | 0d |
| 18 |  | [OSB] Crear Cliente | 0.31d? | 2011-11-01 11:00 | 2011-11-01 15:30 | 17 | 1.12d |
| 19 |  | [BPEL] Crear cliente | 0.38d? | 2011-11-01 15:30 | 2011-11-01 18:30 | 18 | 1.12d |
| 20 |  | [CRM] Crear contactos | 0.38d? | 2011-11-01 11:00 | 2011-11-01 16:00 | 17 | 0d |
| 21 |  | [OSB] Crear contactos | 0.31d? | 2011-11-01 16:00 | 2011-11-01 18:30 | 20 | 0.75d |
| 22 |  | [BPEL] Crear contactos | 0.38d? | 2011-11-01 18:30 | 2011-11-02 11:30 | 21 | 0.75d |
| 23 |  | [CRM] Asignar los productos CRM | 0.38d? | 2011-11-01 16:00 | 2011-11-01 19:00 | 20 | 0d |
| 24 |  | [OSB] Asignar los productos CRM | 0.31d? | 2011-11-02 09:00 | 2011-11-02 11:30 | 23 | 0.25d |
| 25 |  | [BPEL] Asignar los productos CRM | 0.5d? | 2011-11-02 11:30 | 2011-11-02 17:30 | 24 | 0.25d |
| 26 |  | [CRM] radicar solicitud CRM | 0.38d? | 2011-11-02 09:00 | 2011-11-02 12:00 | 23 | 0d |
| 27 |  | [OSB] radicar solicitud CRM | 0.31d? | 2011-11-02 12:00 | 2011-11-02 16:30 | 26 | 0d |
| 28 |  | [BPEL] radicar solicitud CRM | 0.38d? | 2011-11-02 16:30 | 2011-11-03 09:30 | 27 | 0d |
| 29 | 1.3.23 | **Verificación crediticia (Risk Qualification)** | 0.5d? | 2011-10-31 15:00 | 2011-10-31 19:00 |  | 1.25d |
| 30 |  | [LEG] Consultar Confecamaras | 0.25d? | 2011-10-31 15:00 | 2011-10-31 17:00 |  | 1.5d |
| 31 |  | [LEG] Consultar Datacredito | 0.25d? | 2011-10-31 15:00 | 2011-10-31 17:00 |  | 1.5d |
| 32 |  | [LEG] Consultar Antilavado | 0.25d? | 2011-10-31 15:00 | 2011-10-31 17:00 |  | 1.5d |
| 33 |  | [LEG] Consultar Lista Clinton | 0.25d? | 2011-10-31 15:00 | 2011-10-31 17:00 |  | 1.5d |
| 34 |  | [LEG] Crear Verificación Internacional | 0.5d? | 2011-10-31 15:00 | 2011-10-31 19:00 |  | 1.25d |
| 35 |  | [OSB] Verificación crediticia | 0.31d? | 2011-11-01 09:00 | 2011-11-01 11:30 | 29 | 1.25d |
| 36 |  | [BPEL] Verificación crediticia | 0.5d? | 2011-11-01 11:30 | 2011-11-01 17:30 | 35 | 1.25d |
| 37 |  | [PORTAL] Vista contactos | 1d? | 2011-10-31 15:00 | 2011-11-01 13:00 |  | 1.56d |
| 38 |  | [PORTAL] Vista producto | 1d? | 2011-10-31 15:00 | 2011-11-01 13:00 |  | 1.56d |
| 39 |  | [DOC] Prueba de aceptación | 0.25d? | 2011-10-31 15:00 | 2011-10-31 17:00 |  | 2.31d |
| 40 |  | [SEG] Reunión de seguimiento | 0.5d? | 2011-10-31 15:00 | 2011-10-31 19:00 |  | 2.06d |
| 41 |  | [DOC] Seguimiento plan | 0.38d? | 2011-10-31 15:00 | 2011-10-31 18:00 |  | 2.19d |
| 42 |  | [DOC] Seguimiento riesgos | 0.38d? | 2011-10-31 15:00 | 2011-10-31 18:00 |  | 2.19d |
| 43 |  | [DOC] Seguimiento de calidad | 0.38d? | 2011-10-31 15:00 | 2011-10-31 18:00 |  | 2.19d |
| 44 | 1.4 | **Parte 2** | 3.06d? | 2011-11-03 09:30 | 2011-11-08 10:00 | 6 | 0d |
| 45 |  | [CRM] Actualizar estado solicitud | 0.38d? | 2011-11-03 09:30 | 2011-11-03 12:30 |  | 0d |
| 46 |  | [OSB] Actualizar estado solicitud | 0.31d? | 2011-11-03 12:30 | 2011-11-03 17:00 | 45 | 1.88d |
| 47 |  | [BPEL] Actualizar estado solicitud | 0.5d? | 2011-11-03 17:00 | 2011-11-04 11:00 | 46 | 1.88d |
| 48 |  | [CRM] Activar cliente | 0.38d? | 2011-11-03 12:30 | 2011-11-03 17:30 | 45 | 0d |
| 49 |  | [OSB] Activar cliente | 0.31d? | 2011-11-03 17:30 | 2011-11-04 10:00 | 48 | 1.5d |
| 50 |  | [BPEL] Activar cliente | 0.5d? | 2011-11-04 10:00 | 2011-11-04 16:00 | 49 | 1.5d |
| 51 |  | [CRM] consultar contacto | 0.38d? | 2011-11-03 17:30 | 2011-11-04 10:30 | 48 | 0d |
| 52 |  | [OSB] consultar contacto | 0.31d? | 2011-11-04 10:30 | 2011-11-04 13:00 | 51 | 1.12d |
| 53 |  | [BPEL] consultar contacto | 0.5d? | 2011-11-04 15:00 | 2011-11-04 19:00 | 52 | 1.12d |
| 54 |  | [CRM] activar contacto | 0.38d? | 2011-11-04 10:30 | 2011-11-04 15:30 | 51 | 0d |
| 55 |  | [OSB] activar contacto | 0.31d? | 2011-11-04 15:30 | 2011-11-04 18:00 | 54 | 0.75d |
| 56 |  | [BPEL] activar contacto | 0.5d? | 2011-11-04 18:00 | 2011-11-07 12:00 | 55 | 0.75d |
| 57 |  | [CRM] consultar Producto | 0.38d? | 2011-11-04 15:30 | 2011-11-04 18:30 | 54 | 0d |
| 58 |  | [OSB] consultar Producto | 0.31d? | 2011-11-04 18:30 | 2011-11-07 11:00 | 57 | 0.38d |
| 59 |  | [BPEL] consultar Producto | 0.5d? | 2011-11-07 11:00 | 2011-11-07 17:00 | 58 | 0.38d |
| 60 |  | [CRM] activar producto en el CRM | 0.38d? | 2011-11-04 18:30 | 2011-11-07 11:30 | 57 | 0d |
| 61 |  | [OSB] activar producto en el CRM | 0.31d? | 2011-11-07 11:30 | 2011-11-07 16:00 | 60 | 0d |
| 62 |  | [BPEL] activar producto en el CRM | 0.5d? | 2011-11-07 16:00 | 2011-11-08 10:00 | 61 | 0d |
| 63 | 1.4.19 | **Gestión de facturación (Billing chargers)** | 1.06d? | 2011-11-03 09:30 | 2011-11-04 10:00 |  | 2d |
| 64 |  | [LEG] Crear cuenta de facturación | 0.25d? | 2011-11-03 09:30 | 2011-11-03 11:30 |  | 2d |
| 65 |  | [OSB] Crear cuenta de facturación | 0.31d? | 2011-11-03 11:30 | 2011-11-03 16:00 | 64 | 2d |
| 66 |  | [BPEL] Crear cuenta de facturación | 0.5d? | 2011-11-03 16:00 | 2011-11-04 10:00 | 65 | 2d |
| 67 |  | [BPEL] Gestión Correo electrónico | 0.38d? | 2011-11-03 09:30 | 2011-11-03 12:30 |  | 2.69d |
| 68 | 1.4.21 | **Gestión de usuario (LDAP)** | 1.06d? | 2011-11-03 09:30 | 2011-11-04 10:00 |  | 2d |
| 69 |  | [LEG] Crear Usuario | 0.25d? | 2011-11-03 09:30 | 2011-11-03 11:30 |  | 2d |
| 70 |  | [OSB] Crear Usuario | 0.31d? | 2011-11-03 11:30 | 2011-11-03 16:00 | 69 | 2d |

| ID | WBS | Task | Duration | Start | Finish | Predecessors | Total float |
| --- | --- | --- | --- | --- | --- | --- | --- |
| 71 |  | [BPEL] Crear Usuario | 0.5d? | 2011-11-03 16:00 | 2011-11-04 10:00 | 70 | 2d |
| 72 |  | [PORTAL] Vista registro de entidad | 1.25d? | 2011-11-03 09:30 | 2011-11-04 11:30 |  | 1.81d |
| 73 |  | [DOC] Prueba de aceptación | 0.25d? | 2011-11-03 09:30 | 2011-11-03 11:30 |  | 2.81d |
| 74 |  | [SEG] Reunión de seguimiento | 0.5d? | 2011-11-03 09:30 | 2011-11-03 15:30 |  | 2.56d |
| 75 |  | [DOC] Seguimiento plan | 0.38d? | 2011-11-03 09:30 | 2011-11-03 12:30 |  | 2.69d |
| 76 |  | [DOC] Seguimiento riesgos | 0.38d? | 2011-11-03 09:30 | 2011-11-03 12:30 |  | 2.69d |
| 77 |  | [DOC] Seguimiento de calidad | 0.38d? | 2011-11-03 09:30 | 2011-11-03 12:30 |  | 2.69d |
| 78 | 1.5 | **Parte 3** | 2.19d? | 2011-11-08 10:00 | 2011-11-10 11:30 | 44 | 0d |
| 79 |  | [CRM] Actualizar cliente | 0.38d? | 2011-11-08 10:00 | 2011-11-08 13:00 |  | 0d |
| 80 |  | [OSB] Actualizar cliente | 0.31d? | 2011-11-08 15:00 | 2011-11-08 17:30 | 79 | 1d |
| 81 |  | [BPEL] Actualizar cliente | 0.5d? | 2011-11-08 17:30 | 2011-11-09 11:30 | 80 | 1d |
| 82 |  | [CRM] Consultar Contactos | 0.38d? | 2011-11-08 15:00 | 2011-11-08 18:00 | 79 | 0d |
| 83 |  | [OSB] Consultar Contactos | 0.31d? | 2011-11-08 18:00 | 2011-11-09 10:30 | 82 | 0.75d |
| 84 |  | [BPEL] Consultar Contactos | 0.38d? | 2011-11-09 10:30 | 2011-11-09 15:30 | 83 | 0.75d |
| 85 |  | [CRM] Actualizar Contacto | 0.38d? | 2011-11-08 18:00 | 2011-11-09 11:00 | 82 | 0d |
| 86 |  | [OSB] Actualizar Contacto | 0.31d? | 2011-11-09 11:00 | 2011-11-09 15:30 | 85 | 0.38d |
| 87 |  | [BPEL] Actualizar Contacto | 0.38d? | 2011-11-09 15:30 | 2011-11-09 18:30 | 86 | 0.38d |
| 88 |  | [CRM] Actualizar Producto | 0.38d? | 2011-11-09 11:00 | 2011-11-09 16:00 | 85 | 0d |
| 89 |  | [OSB] Actualizar Producto | 0.31d? | 2011-11-09 16:00 | 2011-11-09 18:30 | 88 | 0d |
| 90 |  | [BPEL] Actualizar Producto | 0.38d? | 2011-11-09 18:30 | 2011-11-10 11:30 | 89 | 0d |
| 91 |  | [LEG] Actualizar cliente PO | 0.25d? | 2011-11-08 10:00 | 2011-11-08 12:00 |  | 0.75d |
| 92 |  | [OSB] Actualizar cliente PO | 0.31d? | 2011-11-08 12:00 | 2011-11-08 16:30 | 91 | 1.12d |
| 93 |  | [BPEL] Actualizar cliente PO | 0.5d? | 2011-11-08 16:30 | 2011-11-09 10:30 | 92 | 1.12d |
| 94 |  | [LEG] Actualizar cliente Transact | 0.25d? | 2011-11-08 12:00 | 2011-11-08 16:00 | 91 | 0.75d |
| 95 |  | [OSB] Actualizar cliente Transact | 0.31d? | 2011-11-08 16:00 | 2011-11-08 18:30 | 94 | 0.88d |
| 96 |  | [BPEL] Actualizar cliente Transact | 0.5d? | 2011-11-08 18:30 | 2011-11-09 12:30 | 95 | 0.88d |
| 97 |  | [LEG] Actualizar cliente LDAP | 0.25d? | 2011-11-08 16:00 | 2011-11-08 18:00 | 94 | 0.75d |
| 98 |  | [OSB] Actualizar cliente LDAP | 0.38d? | 2011-11-08 18:00 | 2011-11-09 11:00 | 97 | 0.75d |
| 99 |  | [BPEL] Actualizar cliente LDAP | 0.31d? | 2011-11-09 11:00 | 2011-11-09 15:30 | 98 | 0.75d |
| 100 |  | [PORTAL] Vista edición de entidad | 1.25d? | 2011-11-08 10:00 | 2011-11-09 12:00 |  | 0.94d |
| 101 |  | [DOC] Prueba de aceptación | 0.25d? | 2011-11-08 10:00 | 2011-11-08 12:00 |  | 1.94d |
| 102 |  | [SEG] Reunión de seguimiento | 0.5d? | 2011-11-08 10:00 | 2011-11-08 16:00 |  | 1.69d |
| 103 |  | [DOC] Seguimiento plan | 0.38d? | 2011-11-08 10:00 | 2011-11-08 13:00 |  | 1.81d |
| 104 |  | [DOC] Seguimiento riesgos | 0.38d? | 2011-11-08 10:00 | 2011-11-08 13:00 |  | 1.81d |
| 105 |  | [DOC] Seguimiento de calidad | 0.38d? | 2011-11-08 10:00 | 2011-11-08 13:00 |  | 1.81d |
| 106 |  | [PRO] Catalogo Proceso | 1d? | 2011-11-08 10:00 | 2011-11-09 10:00 |  | 1.19d |
| 107 |  | [PRO] Proceso en BPMN | 0.5d? | 2011-11-08 10:00 | 2011-11-08 16:00 |  | 1.69d |
| 108 |  | [PRO] Diagrama de navegación | 0.5d? | 2011-11-08 10:00 | 2011-11-08 16:00 |  | 1.69d |
| 109 |  | [PRO] Diagrama entidad relación | 0.5d? | 2011-11-08 10:00 | 2011-11-08 16:00 |  | 1.69d |
| 110 |  | [PRO] Portafolio de servicios Legado | 0.5d? | 2011-11-08 10:00 | 2011-11-08 16:00 |  | 1.69d |
| 111 |  | [PRO] Portafolio de servicios OSB Proxy | 0.5d? | 2011-11-08 10:00 | 2011-11-08 16:00 |  | 1.69d |
| 112 |  | [PRO] Portafolio de servicios CRM | 0.5d? | 2011-11-08 10:00 | 2011-11-08 16:00 |  | 1.69d |

## Version 2 (saved 2011-11-28)

Last finish 2011-11-10 → 2011-11-22 (+12d).

Changed:

| ID | Task | Start | Finish | Duration | Total float | Predecessors | Other |
| --- | --- | --- | --- | --- | --- | --- | --- |
| 1 | **Merket place proyecto 3 ciclo 3** | 2011-10-31 09:00 → 2011-10-29 09:00 (-2d) | 2011-11-10 11:30 → 2011-11-22 19:00 (+12d) | 8.31d? → 23d? |  |  |  |
| 2 | **Estabilización** | 2011-10-31 09:00 → 2011-10-29 09:00 (-2d) | 2011-10-31 13:00 → 2011-10-29 13:00 (-2d) |  | 0d → 14.69d |  |  |
| 3 | Actualizar repositorio (BPEL - CRM) | 2011-10-31 09:00 → 2011-10-29 09:00 (-2d) | 2011-10-31 13:00 → 2011-10-29 13:00 (-2d) |  | 0d → 14.69d |  | constraint none → start no earlier than 2011-10-29 09:00 |
| 4 | Actualizar repositorio LEG | 2011-10-31 09:00 → 2011-10-29 09:00 (-2d) | 2011-10-31 13:00 → 2011-10-29 13:00 (-2d) |  | 0d → 14.69d |  | constraint none → start no earlier than 2011-10-29 09:00 |
| 5 | [SEG] Reunión de inicio ciclo 3 | 2011-10-31 09:00 → 2011-10-29 09:00 (-2d) | 2011-10-31 13:00 → 2011-10-29 13:00 (-2d) |  | 7.81d → 22.5d |  | constraint none → start no earlier than 2011-10-29 09:00 |
| 6 | **Parte 1** | 2011-10-31 15:00 → 2011-10-29 15:00 (-2d) | 2011-11-03 09:30 → 2011-11-11 16:30 (+8d) | 2.56d? → 13.19d? | 0d → 4.06d |  |  |
| 7 | [DOC] Estrategía | 2011-10-31 15:00 → 2011-10-30 09:00 (-1d) | 2011-10-31 19:00 → 2011-10-30 13:00 (-1d) |  | 2.06d → 16.25d |  | constraint none → start no earlier than 2011-10-30 09:00 |
| 8 | [DOC] Alcance | 2011-10-31 15:00 → 2011-10-30 09:00 (-1d) | 2011-10-31 19:00 → 2011-10-30 13:00 (-1d) |  | 2.06d → 16.25d | none → 9 |  |
| 9 | [DOC] Estimación | 2011-10-31 15:00 → 2011-10-29 15:00 (-2d) | 2011-10-31 19:00 → 2011-10-29 19:00 (-2d) |  | 2.06d → 16.25d |  |  |
| 10 | [DOC] Plan de proyecto | 2011-10-31 15:00 → 2011-10-30 09:00 (-1d) | 2011-10-31 18:00 → 2011-10-30 12:00 (-1d) |  | 2.19d → 16.38d |  | constraint none → start no earlier than 2011-10-30 09:00 |
| 11 | [DOC] Plan de calidad | 2011-10-31 15:00 → 2011-10-31 09:00 | 2011-10-31 19:00 → 2011-10-31 13:00 |  | 2.06d → 15.25d |  | constraint none → start no earlier than 2011-10-31 09:00 |
| 12 | [DOC] Plan de mejoramiento detallado | 2011-10-31 15:00 → 2011-10-31 09:00 | 2011-10-31 19:00 → 2011-10-31 13:00 |  | 2.06d → 15.25d |  | constraint none → start no earlier than 2011-10-31 09:00 |
| 13 | [DOC] Plan de riesgos | 2011-10-31 15:00 → 2011-10-30 09:00 (-1d) | 2011-10-31 19:00 → 2011-10-30 13:00 (-1d) |  | 2.06d → 16.25d |  | constraint none → start no earlier than 2011-10-30 09:00 |
| 14 | [CRM] Consultar Cliente | 2011-10-31 15:00 → 2011-10-31 09:00 | 2011-10-31 18:00 → 2011-10-31 12:00 |  | 0d → 13.19d |  | constraint none → start no earlier than 2011-10-31 09:00 |
| 15 | [OSB] Consultar Cliente | 2011-10-31 18:00 → 2011-11-02 09:00 (+2d) | 2011-11-01 10:30 → 2011-11-02 11:30 (+1d) |  | 1.5d → 13.06d |  | constraint none → start no earlier than 2011-11-02 09:00 |
| 16 | [BPEL] Consultar Cliente | 2011-11-01 10:30 → 2011-11-02 11:30 (+1d) | 2011-11-01 15:30 → 2011-11-02 16:30 (+1d) |  | 1.5d → 13.06d |  |  |
| 17 | [CRM] Crear cliente | 2011-10-31 18:00 → 2011-11-04 09:00 (+4d) | 2011-11-01 11:00 → 2011-11-04 12:00 (+3d) |  | 0d → 9.56d |  | constraint none → start no earlier than 2011-11-04 09:00 |
| 18 | [OSB] Crear Cliente | 2011-11-01 11:00 → 2011-11-05 09:00 (+4d) | 2011-11-01 15:30 → 2011-11-05 11:30 (+4d) |  | 1.12d → 10.06d |  | constraint none → start no earlier than 2011-11-05 09:00 |
| 19 | [BPEL] Crear cliente | 2011-11-01 15:30 → 2011-11-05 11:30 (+4d) | 2011-11-01 18:30 → 2011-11-05 16:30 (+4d) |  | 1.12d → 10.06d |  |  |
| 20 | [CRM] Crear contactos | 2011-11-01 11:00 → 2011-11-05 09:00 (+4d) | 2011-11-01 16:00 → 2011-11-05 12:00 (+4d) |  | 0d → 8.94d |  | constraint none → start no earlier than 2011-11-05 09:00 |
| 21 | [OSB] Crear contactos | 2011-11-01 16:00 → 2011-11-06 09:00 (+5d) | 2011-11-01 18:30 → 2011-11-06 11:30 (+5d) |  | 0.75d → 9.06d |  | constraint none → start no earlier than 2011-11-06 09:00 |
| 22 | [BPEL] Crear contactos | 2011-11-01 18:30 → 2011-11-06 11:30 (+5d) | 2011-11-02 11:30 → 2011-11-06 16:30 (+4d) |  | 0.75d → 9.06d |  |  |
| 23 | [CRM] Asignar los productos CRM | 2011-11-01 16:00 → 2011-11-06 09:00 (+5d) | 2011-11-01 19:00 → 2011-11-06 12:00 (+5d) |  | 0d → 8.31d |  | constraint none → start no earlier than 2011-11-06 09:00 |
| 24 | [OSB] Asignar los productos CRM | 2011-11-02 09:00 → 2011-11-07 09:00 (+5d) | 2011-11-02 11:30 → 2011-11-07 11:30 (+5d) |  | 0.25d → 7.94d |  | constraint none → start no earlier than 2011-11-07 09:00 |
| 25 | [BPEL] Asignar los productos CRM | 2011-11-02 11:30 → 2011-11-07 11:30 (+5d) | 2011-11-02 17:30 → 2011-11-07 17:30 (+5d) |  | 0.25d → 7.94d |  |  |
| 26 | [CRM] radicar solicitud CRM | 2011-11-02 09:00 → 2011-11-09 09:00 (+7d) | 2011-11-02 12:00 → 2011-11-09 12:00 (+7d) |  | 0d → 5.69d |  | constraint none → start no earlier than 2011-11-09 09:00 |
| 27 | [OSB] radicar solicitud CRM | 2011-11-02 12:00 → 2011-11-11 09:00 (+9d) | 2011-11-02 16:30 → 2011-11-11 11:30 (+9d) |  | 0d → 4.06d |  | constraint none → start no earlier than 2011-11-11 09:00 |
| 28 | [BPEL] radicar solicitud CRM | 2011-11-02 16:30 → 2011-11-11 11:30 (+9d) | 2011-11-03 09:30 → 2011-11-11 16:30 (+8d) |  | 0d → 4.06d |  |  |
| 29 | **Verificación crediticia (Risk Qualification)** | 2011-10-31 15:00 → 2011-10-30 09:00 (-1d) | 2011-10-31 19:00 → 2011-11-04 13:00 (+4d) | 0.5d? → 5.5d? | 1.25d → 11.25d |  |  |
| 30 | [LEG] Consultar Confecamaras | 2011-10-31 15:00 → 2011-10-30 09:00 (-1d) | 2011-10-31 17:00 → 2011-10-30 11:00 (-1d) |  | 1.5d → 16.5d |  | constraint none → start no earlier than 2011-10-30 09:00 |
| 31 | [LEG] Consultar Datacredito | 2011-10-31 15:00 → 2011-10-30 09:00 (-1d) | 2011-10-31 17:00 → 2011-10-30 11:00 (-1d) |  | 1.5d → 16.5d |  | constraint none → start no earlier than 2011-10-30 09:00 |
| 32 | [LEG] Consultar Antilavado | 2011-10-31 15:00 → 2011-10-30 09:00 (-1d) | 2011-10-31 17:00 → 2011-10-30 11:00 (-1d) |  | 1.5d → 16.5d |  | constraint none → start no earlier than 2011-10-30 09:00 |
| 33 | [LEG] Consultar Lista Clinton | 2011-10-31 15:00 → 2011-10-31 09:00 | 2011-10-31 17:00 → 2011-10-31 11:00 |  | 1.5d → 15.5d |  | constraint none → start no earlier than 2011-10-31 09:00 |
| 34 | [LEG] Crear Verificación Internacional | 2011-10-31 15:00 → 2011-11-04 09:00 (+4d) | 2011-10-31 19:00 → 2011-11-04 13:00 (+4d) |  | 1.25d → 11.25d |  | constraint none → start no earlier than 2011-11-04 09:00 |
| 35 | [OSB] Verificación crediticia | 2011-11-01 09:00 → 2011-11-05 09:00 (+4d) | 2011-11-01 11:30 → 2011-11-05 11:30 (+4d) |  | 1.25d → 9.94d | 29 → none | constraint none → start no earlier than 2011-11-05 09:00 |
| 36 | [BPEL] Verificación crediticia | 2011-11-01 11:30 → 2011-11-05 11:30 (+4d) | 2011-11-01 17:30 → 2011-11-05 17:30 (+4d) |  | 1.25d → 9.94d |  |  |
| 37 | [PORTAL] Vista contactos | 2011-10-31 15:00 → 2011-11-05 09:00 (+5d) | 2011-11-01 13:00 → 2011-11-05 19:00 (+4d) |  | 1.56d → 9.75d |  | constraint none → start no earlier than 2011-11-05 09:00 |
| 38 | [PORTAL] Vista producto | 2011-10-31 15:00 → 2011-11-05 09:00 (+5d) | 2011-11-01 13:00 → 2011-11-05 19:00 (+4d) |  | 1.56d → 9.75d |  | constraint none → start no earlier than 2011-11-05 09:00 |
| 39 | [DOC] Prueba de aceptación | 2011-10-31 15:00 → 2011-11-06 09:00 (+6d) | 2011-10-31 17:00 → 2011-11-06 11:00 (+6d) |  | 2.31d → 9.5d |  | constraint none → start no earlier than 2011-11-06 09:00 |
| 40 | [SEG] Reunión de seguimiento | 2011-10-31 15:00 → 2011-11-05 09:00 (+5d) | 2011-10-31 19:00 → 2011-11-05 13:00 (+5d) |  | 2.06d → 10.25d |  | constraint none → start no earlier than 2011-11-05 09:00 |
| 41 | [DOC] Seguimiento plan | 2011-10-31 15:00 → 2011-11-07 09:00 (+7d) | 2011-10-31 18:00 → 2011-11-07 12:00 (+7d) |  | 2.19d → 8.38d |  | constraint none → start no earlier than 2011-11-07 09:00 |
| 42 | [DOC] Seguimiento riesgos | 2011-10-31 15:00 → 2011-10-31 09:00 | 2011-10-31 18:00 → 2011-10-31 12:00 |  | 2.19d → 15.38d |  | constraint none → start no earlier than 2011-10-31 09:00 |
| 43 | [DOC] Seguimiento de calidad | 2011-10-31 15:00 → 2011-11-05 09:00 (+5d) | 2011-10-31 18:00 → 2011-11-05 12:00 (+5d) |  | 2.19d → 10.38d |  | constraint none → start no earlier than 2011-11-05 09:00 |
| 44 | **Parte 2** | 2011-11-03 09:30 → 2011-11-11 16:30 (+8d) | 2011-11-08 10:00 → 2011-11-18 17:30 (+10d) | 3.06d? → 7.12d? |  |  |  |
| 45 | [CRM] Actualizar estado solicitud | 2011-11-03 09:30 → 2011-11-12 09:00 (+9d) | 2011-11-03 12:30 → 2011-11-12 12:00 (+9d) |  | 0d → 3.75d |  | constraint none → start no earlier than 2011-11-12 09:00 |
| 46 | [OSB] Actualizar estado solicitud | 2011-11-03 12:30 → 2011-11-12 12:00 (+9d) | 2011-11-03 17:00 → 2011-11-12 16:30 (+9d) |  | 1.88d → 5.62d |  |  |
| 47 | [BPEL] Actualizar estado solicitud | 2011-11-03 17:00 → 2011-11-12 16:30 (+9d) | 2011-11-04 11:00 → 2011-11-13 10:30 (+9d) |  | 1.88d → 5.62d |  |  |
| 48 | [CRM] Activar cliente | 2011-11-03 12:30 → 2011-11-12 12:00 (+9d) | 2011-11-03 17:30 → 2011-11-12 17:00 (+9d) |  | 0d → 3.75d |  |  |
| 49 | [OSB] Activar cliente | 2011-11-03 17:30 → 2011-11-12 17:00 (+9d) | 2011-11-04 10:00 → 2011-11-13 09:30 (+9d) |  | 1.5d → 5.25d |  |  |
| 50 | [BPEL] Activar cliente | 2011-11-04 10:00 → 2011-11-13 09:30 (+9d) | 2011-11-04 16:00 → 2011-11-13 15:30 (+9d) |  | 1.5d → 5.25d |  |  |
| 51 | [CRM] consultar contacto | 2011-11-03 17:30 → 2011-11-12 17:00 (+9d) | 2011-11-04 10:30 → 2011-11-13 10:00 (+9d) |  | 0d → 3.75d |  |  |
| 52 | [OSB] consultar contacto | 2011-11-04 10:30 → 2011-11-13 10:00 (+9d) | 2011-11-04 13:00 → 2011-11-13 12:30 (+9d) |  | 1.12d → 4.88d |  |  |
| 53 | [BPEL] consultar contacto | 2011-11-04 15:00 → 2011-11-13 12:30 (+9d) | 2011-11-04 19:00 → 2011-11-13 18:30 (+9d) |  | 1.12d → 4.88d |  |  |
| 54 | [CRM] activar contacto | 2011-11-04 10:30 → 2011-11-13 10:00 (+9d) | 2011-11-04 15:30 → 2011-11-13 13:00 (+9d) |  | 0d → 3.75d |  |  |
| 55 | [OSB] activar contacto | 2011-11-04 15:30 → 2011-11-13 15:00 (+9d) | 2011-11-04 18:00 → 2011-11-13 17:30 (+9d) |  | 0.75d → 4.5d |  |  |
| 56 | [BPEL] activar contacto | 2011-11-04 18:00 → 2011-11-13 17:30 (+9d) | 2011-11-07 12:00 → 2011-11-14 11:30 (+7d) |  | 0.75d → 4.5d |  |  |
| 57 | [CRM] consultar Producto | 2011-11-04 15:30 → 2011-11-16 09:00 (+12d) | 2011-11-04 18:30 → 2011-11-16 12:00 (+12d) |  | 0d → 1.25d |  | constraint none → start no earlier than 2011-11-16 09:00 |
| 58 | [OSB] consultar Producto | 2011-11-04 18:30 → 2011-11-16 12:00 (+12d) | 2011-11-07 11:00 → 2011-11-16 16:30 (+9d) |  | 0.38d → 1.62d |  |  |
| 59 | [BPEL] consultar Producto | 2011-11-07 11:00 → 2011-11-18 09:00 (+11d) | 2011-11-07 17:00 → 2011-11-18 13:00 (+11d) |  | 0.38d → 0.31d |  | constraint none → start no earlier than 2011-11-18 09:00 |
| 60 | [CRM] activar producto en el CRM | 2011-11-04 18:30 → 2011-11-16 12:00 (+12d) | 2011-11-07 11:30 → 2011-11-16 17:00 (+9d) |  | 0d → 1.25d |  |  |
| 61 | [OSB] activar producto en el CRM | 2011-11-07 11:30 → 2011-11-18 09:00 (+11d) | 2011-11-07 16:00 → 2011-11-18 11:30 (+11d) |  |  |  | constraint none → start no earlier than 2011-11-18 09:00 |
| 62 | [BPEL] activar producto en el CRM | 2011-11-07 16:00 → 2011-11-18 11:30 (+11d) | 2011-11-08 10:00 → 2011-11-18 17:30 (+10d) |  |  |  |  |
| 63 | **Gestión de facturación (Billing chargers)** | 2011-11-03 09:30 → 2011-11-11 16:30 (+8d) | 2011-11-04 10:00 → 2011-11-12 17:00 (+8d) |  | 2d → 6.06d |  |  |
| 64 | [LEG] Crear cuenta de facturación | 2011-11-03 09:30 → 2011-11-11 16:30 (+8d) | 2011-11-03 11:30 → 2011-11-11 18:30 (+8d) |  | 2d → 6.06d |  | constraint none → start no earlier than 2011-11-05 09:00 |
| 65 | [OSB] Crear cuenta de facturación | 2011-11-03 11:30 → 2011-11-11 18:30 (+8d) | 2011-11-03 16:00 → 2011-11-12 11:00 (+9d) |  | 2d → 6.06d |  |  |
| 66 | [BPEL] Crear cuenta de facturación | 2011-11-03 16:00 → 2011-11-12 11:00 (+9d) | 2011-11-04 10:00 → 2011-11-12 17:00 (+8d) |  | 2d → 6.06d |  |  |
| 67 | [BPEL] Gestión Correo electrónico | 2011-11-03 09:30 → 2011-11-11 16:30 (+8d) | 2011-11-03 12:30 → 2011-11-12 09:30 (+9d) |  | 2.69d → 6.75d |  |  |
| 68 | **Gestión de usuario (LDAP)** | 2011-11-03 09:30 → 2011-11-12 09:00 (+9d) | 2011-11-04 10:00 → 2011-11-13 09:30 (+9d) |  | 2d → 5.75d |  |  |
| 69 | [LEG] Crear Usuario | 2011-11-03 09:30 → 2011-11-12 09:00 (+9d) | 2011-11-03 11:30 → 2011-11-12 11:00 (+9d) |  | 2d → 5.75d |  | constraint none → start no earlier than 2011-11-12 09:00 |
| 70 | [OSB] Crear Usuario | 2011-11-03 11:30 → 2011-11-12 11:00 (+9d) | 2011-11-03 16:00 → 2011-11-12 15:30 (+9d) |  | 2d → 5.75d |  |  |

| ID | Task | Start | Finish | Total float | Other |
| --- | --- | --- | --- | --- | --- |
| 71 | [BPEL] Crear Usuario | 2011-11-03 16:00 → 2011-11-12 15:30 (+9d) | 2011-11-04 10:00 → 2011-11-13 09:30 (+9d) | 2d → 5.75d |  |
| 72 | [PORTAL] Vista registro de entidad | 2011-11-03 09:30 → 2011-11-12 09:00 (+9d) | 2011-11-04 11:30 → 2011-11-13 11:00 (+9d) | 1.81d → 5.56d | constraint none → start no earlier than 2011-11-12 09:00 |
| 73 | [DOC] Prueba de aceptación | 2011-11-03 09:30 → 2011-11-12 09:00 (+9d) | 2011-11-03 11:30 → 2011-11-12 11:00 (+9d) | 2.81d → 6.56d | constraint none → start no earlier than 2011-11-12 09:00 |
| 74 | [SEG] Reunión de seguimiento | 2011-11-03 09:30 → 2011-11-12 09:00 (+9d) | 2011-11-03 15:30 → 2011-11-12 13:00 (+9d) | 2.56d → 6.31d | constraint none → start no earlier than 2011-11-12 09:00 |
| 75 | [DOC] Seguimiento plan | 2011-11-03 09:30 → 2011-11-13 09:00 (+10d) | 2011-11-03 12:30 → 2011-11-13 12:00 (+10d) | 2.69d → 5.44d | constraint none → start no earlier than 2011-11-13 09:00 |
| 76 | [DOC] Seguimiento riesgos | 2011-11-03 09:30 → 2011-11-11 16:30 (+8d) | 2011-11-03 12:30 → 2011-11-12 09:30 (+9d) | 2.69d → 6.75d |  |
| 77 | [DOC] Seguimiento de calidad | 2011-11-03 09:30 → 2011-11-13 09:00 (+10d) | 2011-11-03 12:30 → 2011-11-13 12:00 (+10d) | 2.69d → 5.44d | constraint none → start no earlier than 2011-11-13 09:00 |
| 78 | **Parte 3** | 2011-11-08 10:00 → 2011-11-18 17:30 (+10d) | 2011-11-10 11:30 → 2011-11-22 19:00 (+12d) |  |  |
| 79 | [CRM] Actualizar cliente | 2011-11-08 10:00 → 2011-11-18 17:30 (+10d) | 2011-11-08 13:00 → 2011-11-21 10:30 (+13d) |  |  |
| 80 | [OSB] Actualizar cliente | 2011-11-08 15:00 → 2011-11-21 10:30 (+13d) | 2011-11-08 17:30 → 2011-11-21 13:00 (+13d) |  |  |
| 81 | [BPEL] Actualizar cliente | 2011-11-08 17:30 → 2011-11-21 15:00 (+13d) | 2011-11-09 11:30 → 2011-11-21 19:00 (+12d) |  |  |
| 82 | [CRM] Consultar Contactos | 2011-11-08 15:00 → 2011-11-21 10:30 (+13d) | 2011-11-08 18:00 → 2011-11-21 15:30 (+13d) |  |  |
| 83 | [OSB] Consultar Contactos | 2011-11-08 18:00 → 2011-11-21 15:30 (+13d) | 2011-11-09 10:30 → 2011-11-21 18:00 (+12d) |  |  |
| 84 | [BPEL] Consultar Contactos | 2011-11-09 10:30 → 2011-11-21 18:00 (+12d) | 2011-11-09 15:30 → 2011-11-22 11:00 (+13d) |  |  |
| 85 | [CRM] Actualizar Contacto | 2011-11-08 18:00 → 2011-11-21 15:30 (+13d) | 2011-11-09 11:00 → 2011-11-21 18:30 (+12d) |  |  |
| 86 | [OSB] Actualizar Contacto | 2011-11-09 11:00 → 2011-11-21 18:30 (+12d) | 2011-11-09 15:30 → 2011-11-22 11:00 (+13d) |  |  |
| 87 | [BPEL] Actualizar Contacto | 2011-11-09 15:30 → 2011-11-22 11:00 (+13d) | 2011-11-09 18:30 → 2011-11-22 16:00 (+13d) |  |  |
| 88 | [CRM] Actualizar Producto | 2011-11-09 11:00 → 2011-11-21 18:30 (+12d) | 2011-11-09 16:00 → 2011-11-22 11:30 (+13d) |  |  |
| 89 | [OSB] Actualizar Producto | 2011-11-09 16:00 → 2011-11-22 11:30 (+13d) | 2011-11-09 18:30 → 2011-11-22 16:00 (+13d) |  |  |
| 90 | [BPEL] Actualizar Producto | 2011-11-09 18:30 → 2011-11-22 16:00 (+13d) | 2011-11-10 11:30 → 2011-11-22 19:00 (+12d) |  |  |
| 91 | [LEG] Actualizar cliente PO | 2011-11-08 10:00 → 2011-11-18 17:30 (+10d) | 2011-11-08 12:00 → 2011-11-21 09:30 (+13d) |  |  |
| 92 | [OSB] Actualizar cliente PO | 2011-11-08 12:00 → 2011-11-21 09:30 (+13d) | 2011-11-08 16:30 → 2011-11-21 12:00 (+13d) |  |  |
| 93 | [BPEL] Actualizar cliente PO | 2011-11-08 16:30 → 2011-11-21 12:00 (+13d) | 2011-11-09 10:30 → 2011-11-21 18:00 (+12d) |  |  |
| 94 | [LEG] Actualizar cliente Transact | 2011-11-08 12:00 → 2011-11-21 09:30 (+13d) | 2011-11-08 16:00 → 2011-11-21 11:30 (+13d) |  |  |
| 95 | [OSB] Actualizar cliente Transact | 2011-11-08 16:00 → 2011-11-21 11:30 (+13d) | 2011-11-08 18:30 → 2011-11-21 16:00 (+13d) |  |  |
| 96 | [BPEL] Actualizar cliente Transact | 2011-11-08 18:30 → 2011-11-21 16:00 (+13d) | 2011-11-09 12:30 → 2011-11-22 10:00 (+13d) |  |  |
| 97 | [LEG] Actualizar cliente LDAP | 2011-11-08 16:00 → 2011-11-21 11:30 (+13d) | 2011-11-08 18:00 → 2011-11-21 15:30 (+13d) |  |  |
| 98 | [OSB] Actualizar cliente LDAP | 2011-11-08 18:00 → 2011-11-21 15:30 (+13d) | 2011-11-09 11:00 → 2011-11-21 18:30 (+12d) |  |  |
| 99 | [BPEL] Actualizar cliente LDAP | 2011-11-09 11:00 → 2011-11-21 18:30 (+12d) | 2011-11-09 15:30 → 2011-11-22 11:00 (+13d) |  |  |
| 100 | [PORTAL] Vista edición de entidad | 2011-11-08 10:00 → 2011-11-18 17:30 (+10d) | 2011-11-09 12:00 → 2011-11-22 09:30 (+13d) |  |  |
| 101 | [DOC] Prueba de aceptación | 2011-11-08 10:00 → 2011-11-18 17:30 (+10d) | 2011-11-08 12:00 → 2011-11-21 09:30 (+13d) |  |  |
| 102 | [SEG] Reunión de seguimiento | 2011-11-08 10:00 → 2011-11-18 17:30 (+10d) | 2011-11-08 16:00 → 2011-11-21 11:30 (+13d) |  |  |
| 103 | [DOC] Seguimiento plan | 2011-11-08 10:00 → 2011-11-18 17:30 (+10d) | 2011-11-08 13:00 → 2011-11-21 10:30 (+13d) |  |  |
| 104 | [DOC] Seguimiento riesgos | 2011-11-08 10:00 → 2011-11-18 17:30 (+10d) | 2011-11-08 13:00 → 2011-11-21 10:30 (+13d) |  |  |
| 105 | [DOC] Seguimiento de calidad | 2011-11-08 10:00 → 2011-11-18 17:30 (+10d) | 2011-11-08 13:00 → 2011-11-21 10:30 (+13d) |  |  |
| 106 | [PRO] Catalogo Proceso | 2011-11-08 10:00 → 2011-11-18 17:30 (+10d) | 2011-11-09 10:00 → 2011-11-21 17:30 (+12d) |  |  |
| 107 | [PRO] Proceso en BPMN | 2011-11-08 10:00 → 2011-11-18 17:30 (+10d) | 2011-11-08 16:00 → 2011-11-21 11:30 (+13d) |  |  |
| 108 | [PRO] Diagrama de navegación | 2011-11-08 10:00 → 2011-11-18 17:30 (+10d) | 2011-11-08 16:00 → 2011-11-21 11:30 (+13d) |  |  |
| 109 | [PRO] Diagrama entidad relación | 2011-11-08 10:00 → 2011-11-18 17:30 (+10d) | 2011-11-08 16:00 → 2011-11-21 11:30 (+13d) |  |  |
| 110 | [PRO] Portafolio de servicios Legado | 2011-11-08 10:00 → 2011-11-18 17:30 (+10d) | 2011-11-08 16:00 → 2011-11-21 11:30 (+13d) |  |  |
| 111 | [PRO] Portafolio de servicios OSB Proxy | 2011-11-08 10:00 → 2011-11-18 17:30 (+10d) | 2011-11-08 16:00 → 2011-11-21 11:30 (+13d) |  |  |
| 112 | [PRO] Portafolio de servicios CRM | 2011-11-08 10:00 → 2011-11-18 17:30 (+10d) | 2011-11-08 16:00 → 2011-11-21 11:30 (+13d) |  |  |
